# TRIAL PROJECT

Schedule from Primavera P6, 2013-08-03 to 2015-02-19, data date 2013-08-03, costs in EP, A marks actual dates.

## Calendars

- test project: Mon-Thu 08:00-16:00; Fri off; Sat-Sun 08:00-16:00. Exceptions (off unless hours are given): 2013-09-02, 2013-11-28, 2013-12-25.

## Resources

| Resource | Group | Unit | Rate | Notes |
| --- | --- | --- | --- | --- |
| excavator | equipment |  | 30 |  |
| lodr | equipment |  | 20 |  |
| truck | equipment |  | 15 |  |
| REPLACEMENT | labor |  | 13 |  |
| compactor | equipment |  | 5 |  |
| WATER | material | m3 | 2 |  |
| CARPENTER | labor |  |  |  |
| CONCRETE | material | m3 |  |  |
| CARPENTER | labor |  |  |  |
| LABOUR | labor |  |  |  |
| STELL FIXER | labor |  |  |  |
| STEEL | material | tons | 5000 |  |
| STEEL FIXER | labor |  |  |  |
| INSOMAT | material | m2 | 25 |  |
| ISOLATION | labor |  |  |  |
| ISOLATION | material | kg | 3 |  |
| LABOUR | labor |  |  |  |
| BRICK | material | TH | 250 |  |
| MAISON | labor |  |  |  |
| CEMENT | material | tons | 500 |  |
| MASION | labor |  |  |  |
| SAND | material | m3 | 12 |  |
| WOODEN FRAME | material | UT | 200 |  |
| PLASTER | labor |  |  | BASEMENT FLOOR 8LE / CELLING 10LE / GROUND FLOOR 9 LE / CELLING 11 |
| PACKING LABOUR | labor |  |  |  |
| PLASTER | labor |  |  |  |
| WHITE CEMENT | material | tons | 750 |  |
| CERMIC | material | m2 |  |  |
| CERMIC MAISON | labor |  |  |  |
| TILE MASION | labor |  |  |  |
| PAINT PACKAGE | material | UT | 50 |  |
| PAINTER | labor |  | 12 |  |
| PAINTER | labor |  |  |  |
| FALSE CELLING | labor |  | 120 |  |
| FALSE CEILLING | labor |  |  |  |
| ISOLATION LABOUR | labor |  | 10 |  |
| THERMAL ISOLATION | material | m2 | 50 |  |
| STEEL MAKER | material | kg | 12 |  |
| TILE MAISON | labor |  | 35 |  |
| RED TILE | material | m2 | 90 |  |
| WINDOWS&DOORS | material | UT | 150 |  |
| WOODEN FLOOR | material | m2 | 15 |  |
| MARBLE | material | m2 | 80 |  |
| MARBLE MAISON | labor |  |  |  |
| FINISHING LABOUR | labor |  | 3 |  |
| ALMNIUM | material | m2 | 150 |  |
| CEMENT TILE | material | m2 | 12 |  |
| GRAVITO | material | tons | 1000 |  |
| STAIRS | material | UT | 50 |  |
| FURNTURE | labor |  |  |  |
| PLUMPER | labor |  |  |  |
| SAINTARY material | material | UT |  |  |
| PLUMPER | labor |  |  |  |
| BOX & PIPE | material | UT |  |  |
| ELECTRICAL | labor |  |  |  |
| ELECTRCIAN | labor |  |  |  |
| ELEC WIRE | material |  |  |  |
| FINISHING ELEC | material |  |  |  |

## Schedule

| ID | Activity | Type | Duration | Start | Finish | Predecessors | Total float | Free float | Resources | Cost | 01 project | 02 type of work | 03 div of work | 04 floor |
| --- | --- | --- | --- | --- | --- | --- | --- | --- | --- | --- | --- | --- | --- | --- |
| 1400 | PROJECT START | milestone | 0d | 2013-08-03 | 2013-08-03 |  |  |  |  |  | project | 01 | 01 | 10 |
| 1410 | R.C SHOPDRAWING SUBMITAL |  | 5d | 2013-08-03 | 2013-08-10 |  | 36d | 0d |  |  | project | 02 | 02 | 01 |
| 1730 | MOBILZATION |  | 30d | 2013-08-03 | 2013-09-16 | 1400 | 0d |  |  |  | project | 02 | 01 | 10 |
| 1420 | R.C SHOPDRAWING APPROVAL |  | 5d | 2013-08-10 | 2013-08-17 | 1410 | 44d |  |  |  | project | 02 | 02 | 01 |
| 1450 | B.COL. SHOPDRAWING SUBMITAL |  | 5d | 2013-08-10 | 2013-08-17 | 1410 | 36d | 0d |  |  | project | 02 | 02 | 02 |
| 1460 | B.COL SHOPDRAWING APPROVAL |  | 5d | 2013-08-17 | 2013-08-24 | 1450 | 71d |  |  |  | project | 02 | 02 | 02 |
| 1740 | B.SLAB SHOPDRAWING SUBMITAL |  | 5d | 2013-08-17 | 2013-08-24 | 1450 | 36d | 0d |  |  | project | 02 | 02 | 02 |
| 1470 | GR.COL. SHOPDRAWING SUBMITAL |  | 5d | 2013-08-24 | 2013-08-31 | 1740 | 36d | 0d |  |  | project | 02 | 02 | 03 |
| 1750 | B.SLAB SHOPDRAWING APPROVAL |  | 5d | 2013-08-24 | 2013-08-31 | 1740 | 73d |  |  |  | project | 02 | 02 | 02 |
| 1480 | GR.COL SHOPDRAWING APPROVAL |  | 5d | 2013-09-01 | 2013-09-09 | 1470 | 78d |  |  |  | project | 02 | 02 | 03 |
| 1760 | GR.SLAB SHOPDRAWING SUBMITAL |  | 5d | 2013-09-01 | 2013-09-09 | 1470 | 36d | 0d |  |  | project | 02 | 02 | 03 |
| 1490 | 1ST COL. SHOPDRAWING SUBMITAL |  | 5d | 2013-09-09 | 2013-09-16 | 1760 | 36d | 0d |  |  | project | 02 | 02 | 04 |
| 1770 | GR.SLAB SHOPDRAWING APPROVAL |  | 5d | 2013-09-09 | 2013-09-16 | 1760 | 80d |  |  |  | project | 02 | 02 | 03 |
| 10 | EXCAVATION |  | 10d | 2013-09-16 | 2013-09-30 | 1730 | 0d |  | excavator [56 h]; excavator [72 h]; lodr [64 h]; truck [56 h] | 6,800 | project | 03 | 06 | 01 |
| 1500 | 1ST COL SHOPDRAWING APPROVAL |  | 5d | 2013-09-16 | 2013-09-23 | 1490 | 95d | 86d |  |  | project | 02 | 02 | 04 |
| 1780 | 1ST SLAB. SHOPDRAWING SUBMITAL |  | 5d | 2013-09-16 | 2013-09-23 | 1490 | 36d | 0d |  |  | project | 02 | 02 | 04 |
| 1620 | BRICK MATERIAL APPROVAL |  | 5d | 2013-09-21 | 2013-09-28 | 1630 SF | 343d | 33d |  |  | project | 02 | 05 | 10 |
| 1510 | 2ND COL. SHOPDRAWING SUBMITAL |  | 5d | 2013-09-23 | 2013-09-30 | 1780 | 36d | 0d |  |  | project | 02 | 02 | 05 |
| 1790 | 1ST SLAB SHOPDRAWING APPROVAL |  | 5d | 2013-09-23 | 2013-09-30 | 1780 | 97d | 88d |  |  | project | 02 | 02 | 04 |
| 1630 | BRICK MATERIAL PROCURMENT |  | 5d | 2013-09-28 | 2013-10-05 | 1640 SF | 343d | 0d |  |  | project | 02 | 05 | 10 |
| 1520 | 2ND COL SHOPDRAWING APPROVAL |  | 5d | 2013-10-01 | 2013-10-08 | 1510 | 36d | 0d |  |  | project | 02 | 02 | 05 |
| 20 | REPLACMENT LAYER |  | 7d | 2013-10-01 | 2013-10-10 | 10 | 0d |  | REPLACEMENT [1500 h] | 19,500 | project | 03 | 06 | 01 |
| 1640 | BRICK MATERIAL DELIEVERY |  | 30d | 2013-10-05 | 2013-11-18 | 100 SF | 313d | 0d |  |  | project | 02 | 05 | 10 |
| 1800 | 2ND SLAB. SHOPDRAWING SUBMITAL |  | 5d | 2013-10-08 | 2013-10-15 | 1520 | 36d | 0d |  |  | project | 02 | 02 | 05 |
| 40 | P.C |  | 7d | 2013-10-10 | 2013-10-21 | 20 | 0d |  | CARPENTER [208 h]; CONCRETE [208 m3]; CARPENTER [35 h]; LABOUR [12 h] | 54,080 | project | 03 | 07 | 01 |
| 1530 | 3RD COL. SHOPDRAWING SUBMITAL |  | 5d | 2013-10-15 | 2013-10-22 | 1800 | 36d | 0d |  |  | project | 02 | 02 | 06 |
| 1810 | 2ND SLAB SHOPDRAWING APPROVAL |  | 5d | 2013-10-15 | 2013-10-22 | 1800 | 108d | 90d |  |  | project | 02 | 02 | 05 |
| 1570 | ISOLATION MATERIAL SUBMITAL |  | 5d | 2013-10-16 | 2013-10-24 | 1580 SF | 330d |  |  |  | project | 02 | 04 | 10 |
| 1980 | backfill MATERIAL SUBMITAL |  | 5d | 2013-10-21 | 2013-10-28 | 1990 SF | 312d | 2d |  |  | project | 02 | 04 | 10 |
| 50 | R.C |  | 12d | 2013-10-21 | 2013-11-07 | 40, 1420 | 0d |  | CARPENTER [200 h]; STELL FIXER [304 h]; CONCRETE [304 m3]; STEEL [30 tons]; CARPENTER [54 h]; CARPENTER [50 h]; STELL FIXER [96 h]; CARPENTER [61 h]; STEEL FIXER [76 h]; LABOUR [46 h] | 262,480 | project | 03 | 07 | 01 |
| 1540 | 3RD CO. SHOPDRAWING APPROVAL |  | 5d | 2013-10-22 | 2013-10-29 | 1530 | 122d | 95d |  |  | project | 02 | 02 | 06 |
| 1820 | 3RD SLAB. SHOPDRAWING SUBMITAL |  | 5d | 2013-10-22 | 2013-10-29 | 1530 | 36d | 0d |  |  | project | 02 | 02 | 06 |
| 1580 | ISOLATION MATERIAL APPROVAL |  | 5d | 2013-10-24 | 2013-10-31 | 1590 SF | 310d | 0d |  |  | project | 02 | 04 | 10 |
| 1990 | backfill MATERIAL APPROVAL |  | 5d | 2013-10-28 | 2013-11-05 | 2000 SF | 312d | 0d |  |  | project | 02 | 04 | 10 |
| 1550 | ROOF COL. SHOPDRAWING SUBMITAL |  | 5d | 2013-10-30 | 2013-11-06 | 1820 | 36d | 0d |  |  | project | 02 | 02 | 07 |
| 1830 | 3RD SLAB SHOPDRAWING APPROVAL |  | 5d | 2013-10-30 | 2013-11-06 | 1820 | 124d | 97d |  |  | project | 02 | 02 | 06 |
| 1590 | ISOLATION MATERIAL PROCURMENT |  | 5d | 2013-10-31 | 2013-11-07 | 1600 SF | 310d | 0d |  |  | project | 02 | 04 | 10 |
| 1610 | BRICK MATERIAL SUBMITAL |  | 5d | 2013-10-31 | 2013-11-07 | 1980, 1620 SF, 1980 FF, 1580 | 310d | 0d |  |  | project | 02 | 05 | 10 |
| 1660 | CERMIC MATERIAL APPROVAL |  | 5d | 2013-10-31 | 2013-11-07 | 1670 SF | 320d | 10d |  |  | project | 02 | 05 | 10 |
| 2000 | backfill MATERIAL PROCURMENT |  | 5d | 2013-11-05 | 2013-11-12 | 2010 SF | 312d | 0d |  |  | project | 02 | 04 | 10 |
| 1560 | ROOF COL. SHOPDRAWING APPROVAL |  | 5d | 2013-11-06 | 2013-11-13 | 1550 | 148d | 102d |  |  | project | 02 | 02 | 07 |
| 1840 | ROOF SLAB SHOPDRAWING SUBMITAL |  | 5d | 2013-11-06 | 2013-11-13 | 1550 | 36d | 0d |  |  | project | 02 | 02 | 07 |
| 1600 | ISOLATION MATERIAL PROCURMENT |  | 10d | 2013-11-07 | 2013-11-23 | 80 SF | 310d | 0d |  |  | project | 02 | 04 | 10 |
| 1650 | CERMIC MATERIAL SUBMITAL |  | 5d | 2013-11-07 | 2013-11-14 | 1660 SF, 1610 | 310d | 218d |  |  | project | 02 | 05 | 10 |
| 1670 | CERMIC MATERIAL PROCURMENT |  | 5d | 2013-11-07 | 2013-11-14 | 1680 SF | 315d | 0d |  |  | project | 02 | 05 | 10 |
| 60 | NECK COLUMN |  | 7d | 2013-11-07 | 2013-11-18 | 50 | 0d |  | CARPENTER [4920 h]; STELL FIXER [4920 h]; STEEL [3 tons]; CONCRETE [82 m3]; CARPENTER [42 h]; LABOUR [14 h]; STEEL FIXER [28 h]; LABOUR [9 h] | 42,060 | project | 03 | 07 | 01 |
| 2010 | backfill MATERIAL PROCURMENT |  | 10d | 2013-11-12 | 2013-11-26 | 30 SF | 307d | 0d |  |  | project | 02 | 04 | 10 |
| 1850 | ROOF SLAB SHOPDRAWING APPROVAL |  | 5d | 2013-11-13 | 2013-11-20 | 1840 | 36d | 0d |  |  | project | 02 | 02 | 07 |
| 1680 | CERMIC MATERIAL DELIEVERY |  | 60d | 2013-11-14 | 2014-02-12 | 260 SF | 255d | 0d |  |  | project | 02 | 05 | 10 |
| 100 | BRICK WORK |  | 3d | 2013-11-18 | 2013-11-21 | 60 | 0d |  | BRICK [10 TH]; MAISON [10 h]; CEMENT [4 tons]; WATER [10 m3]; MASION [8 h]; LABOUR [4 h] | 5,720 | project | 03 | 08 | 01 |
| 1860 | B.MASONARY SHOPDRAWING SUBMITAL |  | 5d | 2013-11-20 | 2013-11-27 | 1850 | 36d | 0d |  |  | project | 02 | 03 | 02 |
| 80 | DAMP PROOFING |  | 2d | 2013-11-23 | 2013-11-25 | 100 | 0d |  | INSOMAT [500 m2]; ISOLATION [4 h] | 12,500 | project | 03 | 12 | 01 |
| 90 | INSULATION |  | 1d | 2013-11-25 | 2013-11-26 | 80 | 0d |  | ISOLATION [4000 kg]; LABOUR [250 h]; ISOLATION [5 h] | 12,000 | project | 03 | 12 | 01 |
| 30 | BACKFILL |  | 5d | 2013-11-26 | 2013-12-04 | 90 | 0d |  | lodr [32 h]; lodr [24 h]; compactor [40 h]; WATER [500 m3] | 2,320 | project | 03 | 06 | 01 |
| 1870 | B.MASONARY SHOPDRAWING APPROVAL |  | 5d | 2013-11-30 | 2013-12-07 | 1860 | 36d |  |  |  | project | 02 | 03 | 02 |
| 1880 | GR.MASONARY SHOPDRAWING SUBMITAL |  | 5d | 2013-11-30 | 2013-12-07 | 1860 | 39d | 0d |  |  | project | 02 | 03 | 03 |
| 70 | SLAB ON GRADE |  | 2d | 2013-12-05 | 2013-12-08 | 30 | 0d |  | STEEL [1.5 tons]; STELL FIXER [15 h]; CONCRETE [15 m3]; CARPENTER [2 h]; LABOUR [1 h]; STEEL FIXER [3 h] | 12,300 | project | 03 | 07 | 01 |
| 1890 | GR.MASONARY SHOPDRAWING APPROVAL |  | 5d | 2013-12-07 | 2013-12-14 | 1880 | 39d | 34d |  |  | project | 02 | 03 | 03 |
| 1900 | 1ST.MASONARY SHOPDRAWING SUBMITAL |  | 5d | 2013-12-07 | 2013-12-14 | 1880 | 68d | 0d |  |  | project | 02 | 03 | 04 |
| 110 | BASEMENT COLUMN |  | 7d | 2013-12-08 | 2013-12-18 | 70, 1460 | 0d |  | STEEL [2.84 tons]; STELL FIXER [11 h]; CARPENTER [32 h]; CONCRETE [32 m3]; CARPENTER [16 h]; LABOUR [5 h]; STEEL FIXER [11 h]; LABOUR [4 h] | 26,680 | project | 04 | 07 | 02 |
| 1910 | 1ST.MASONARY SHOPDRAWING APPROVAL |  | 5d | 2013-12-14 | 2013-12-21 | 1900 | 68d | 0d |  |  | project | 02 | 03 | 04 |
| 120 | BASEMENT SLAB |  | 10d | 2013-12-18 | 2014-01-02 | 110, 1750 | 0d |  | STEEL [16 tons]; CONCRETE [160 m3]; CARPENTER [130 h]; STELL FIXER [160 h]; CARPENTER [30 h]; CARPENTER [26 h]; LABOUR [9 h]; CARPENTER [6 h]; LABOUR [2 h]; STEEL FIXER [27 h] | 142,400 | project | 04 | 07 | 02 |
| 1920 | 2ND.MASONARY SHOPDRAWING SUBMITAL |  | 5d | 2013-12-21 | 2013-12-29 | 1910 | 68d | 0d |  |  | project | 02 | 03 | 05 |
| 1930 | 2ND.MASONARY SHOPDRAWING APPROVAL |  | 5d | 2013-12-30 | 2014-01-06 | 1920 | 68d | 50d |  |  | project | 02 | 03 | 05 |
| 1940 | 3RD.MASONARY SHOPDRAWING SUBMITAL |  | 5d | 2013-12-30 | 2014-01-06 | 1920 | 89d | 0d |  |  | project | 02 | 03 | 06 |
| 130 | GROUND COLUMN |  | 7d | 2014-01-02 | 2014-01-13 | 120, 1480 | 0d |  | CARPENTER [28 h]; STELL FIXER [28 h]; STEEL [3 tons]; CONCRETE [70 m3]; CARPENTER [35 h]; LABOUR [12 h]; STEEL FIXER [24 h]; LABOUR [8 h] | 17,800 | project | 04 | 07 | 03 |
| 1950 | 3RD.MASONARY SHOPDRAWING APPROVAL |  | 5d | 2014-01-06 | 2014-01-13 | 1940 | 89d | 62d |  |  | project | 02 | 03 | 06 |
| 1960 | ROOF MASONARY SHOPDRAWING SUBMITAL |  | 5d | 2014-01-06 | 2014-01-13 | 1940 | 113d | 0d |  |  | project | 02 | 03 | 07 |
| 140 | GROUND SLAB |  | 11d | 2014-01-13 | 2014-01-29 | 130, 1770 | 0d |  | STEEL [100 tons]; CARPENTER [110 h]; STELL FIXER [148 h]; CONCRETE [148 m3]; CARPENTER [38 h]; CARPENTER [22 h]; LABOUR [7 h]; CARPENTER [8 h]; LABOUR [3 h]; STEEL FIXER [25 h]; LABOUR [8 h] | 555,010 | project | 04 | 07 | 03 |
| 1970 | ROOF MASONARY SHOPDRAWING APPROVAL |  | 5d | 2014-01-13 | 2014-01-20 | 1960 | 113d | 67d |  |  | project | 02 | 03 | 07 |

Notes:
- 130: Steps: carpenter; steel fixer; concrete
- 140: Expenses: nail 100; lunch 150

| ID | Activity | Duration | Start | Finish | Predecessors | Remaining | Total float | Free float | Resources | Cost | 01 project | 02 type of work | 03 div of work | 04 floor |
| --- | --- | --- | --- | --- | --- | --- | --- | --- | --- | --- | --- | --- | --- | --- |
| 150 | 1ST FLOOR COLUMN | 7d | 2014-01-29 | 2014-02-08 | 140, 1500 |  | 9d | 0d | STEEL [3 tons]; CARPENTER [24 h]; STELL FIXER [24 h]; CONCRETE [50 m3]; CARPENTER [25 h]; LABOUR [8 h]; STEEL FIXER [17 h]; LABOUR [6 h] | 25,010 | project | 04 | 07 | 04 |
| 230 | B. FLOOR MASONARY WORK | 3d | 2014-01-29 | 2014-02-02 | 1870, 140 |  | 0d |  | BRICK [8.8 TH]; CEMENT [2 tons]; WATER [6 m3]; SAND [6 m3]; MAISON [1280 h]; MASION [16 h]; LABOUR [10 h] | 4,340 | project | 05 | 08 | 02 |
| 240 | WINDOWS&DOORS | 14d | 2014-02-03 | 2014-02-23 | 230 |  | 33d | 0d | WOODEN FRAME [26 UT] | 5,200 | project | 05 | 09 | 02 |
| 280 | GR. FLOOR MASONARY WORK | 9d | 2014-02-03 | 2014-02-16 | 230, 1890, 140 |  | 5d | 0d | BRICK [50.6 TH]; SAND [37 m3]; WATER [37 m3]; MAISON [920 h]; CEMENT [12 tons]; MASION [100 h]; LABOUR [67 h] | 26,528 | project | 05 | 08 | 03 |
| 980 | INTIAL SAINTARY WORK | 7d | 2014-02-03 | 2014-02-12 | 230 |  | 0d |  | PLUMPER [2 h]; SAINTARY material [70 UT]; PLUMPER [14 h]; LABOUR [7 h] | 13,000 | project | 07 | 10 | 02 |
| 160 | 1ST FLOOR SLAB | 10d | 2014-02-09 | 2014-02-23 | 150, 1790 |  | 9d | 0d | STEEL [100 tons]; STELL FIXER [155 h]; CARPENTER [110 h]; CONCRETE [155 m3]; CARPENTER [45 h]; CARPENTER [22 h]; LABOUR [7 h]; CARPENTER [9 h]; LABOUR [2 h]; STEEL FIXER [26 h]; LABOUR [9 h] | 519,500 | project | 04 | 07 | 04 |
| 250 | PLASTER | 14d | 2014-02-12 | 2014-03-05 | 980 |  | 0d |  | PLASTER [980 h]; PACKING LABOUR [10 h]; CEMENT [2.94 tons]; SAND [10 m3]; PACKING LABOUR [3 h]; WATER [20 m3]; CEMENT [3 tons]; PLASTER [82 h]; LABOUR [28 h] | 12,460 | project | 05 | 09 | 02 |
| 260 | CERMIC | 5d | 2014-02-12 | 2014-02-19 | 980 |  | 204d | 0d | WHITE CEMENT [0.1 tons]; CERMIC [90 m2]; CEMENT [1 tons]; SAND [3 m3]; WATER [2 m3]; PACKING LABOUR [3 h]; PACKING LABOUR [50 h]; CERMIC MAISON [90 h]; TILE MASION [12 h]; LABOUR [6 h] | 6,530 | project | 05 | 09 | 02 |
| 1000 | INTIAL SAINTARY WORK | 7d | 2014-02-16 | 2014-02-25 | 980, 280 |  | 5d |  | SAINTARY material [70 UT]; PLUMPER [3 h]; PLUMPER [14 h]; LABOUR [7 h] | 13,000 | project | 07 | 10 | 03 |
| 320 | CERMIC | 10d | 2014-02-20 | 2014-03-06 | 260 |  | 204d | 0d | CERMIC MAISON [270 h]; WATER [11 m3]; CEMENT [2.8 tons]; WHITE CEMENT [0.5 tons]; SAND [10 m3]; CERMIC [270 m2]; TILE MASION [34 h]; LABOUR [17 h] | 27,837 | project | 05 | 09 | 03 |
| 990 | FINAL SAINTARY WORK | 3d | 2014-02-20 | 2014-02-24 | 260 |  | 233d | 7d | PLUMPER [30 h]; SAINTARY material [30 UT]; PLUMPER [7 h] | 6,500 | project | 07 | 10 | 02 |
| 1100 | 1ST ELECTRICAL FIX | 10d | 2014-02-23 | 2014-03-09 | 240 |  | 49d | 4d | BOX & PIPE [30 UT]; ELECTRICAL [100 h]; ELECTRCIAN [100 h]; LABOUR [100 h] | 4,510 | project | 08 | 11 | 02 |
| 170 | 2ND FLOOR COLUMN | 7d | 2014-02-23 | 2014-03-05 | 160, 1520 |  | 18d | 0d | STEEL [2.5 tons]; CARPENTER [22 h]; STELL FIXER [22 h]; CONCRETE [22 m3]; CARPENTER [11 h]; LABOUR [4 h]; STEEL FIXER [8 h]; LABOUR [3 h] | 22,170 | project | 04 | 07 | 05 |
| 290 | WINDOWS&DOORS | 14d | 2014-02-23 | 2014-03-15 | 240, 280 |  | 33d | 0d | WOODEN FRAME [14 UT] | 2,800 | project | 05 | 09 | 03 |
| 340 | 1ST FLOOR MASONARY WORK | 11d | 2014-02-23 A | 2014-03-11 | 280, 160 | 11d | 9d | 0d | MAISON [1012 h]; BRICK [65 TH]; WATER [41 m3]; SAND [41 m3]; CEMENT [13 tons]; MASION [67 h] | 31,420 | project | 05 | 08 | 04 |
| 1110 | 2ND ELECTRICAL FIX | 5d | 2014-03-05 | 2014-03-12 | 250 |  | 60d | 15d | ELECTRICAL [50 h]; ELEC WIRE [30]; ELECTRCIAN [10 h]; LABOUR [5 h] | 4,500 | project | 08 | 11 | 02 |
| 180 | 2ND FLOOR SLAB | 10d | 2014-03-05 | 2014-03-19 | 170, 1810 |  | 18d | 0d | CARPENTER [125 h]; STELL FIXER [176 h]; CONCRETE [176 m3]; STEEL [20 tons]; CARPENTER [36 h]; LABOUR [112 h]; STEEL FIXER [30 h]; LABOUR [10 h] | 147,520 | project | 04 | 07 | 05 |
| 300 | PLASTER | 20d | 2014-03-05 | 2014-04-03 | 1000, 250 |  | 0d |  | PLASTER [1698 h]; SAND [20 m3]; CEMENT [5.5 tons]; WATER [34 m3]; PLASTER [200 h]; LABOUR [200 h] | 17,262 | project | 05 | 09 | 03 |
| 1010 | FINAL SAINTARY WORK | 3d | 2014-03-06 | 2014-03-11 | 320, 990 |  | 226d | 17d | PLUMPER [3 h]; SAINTARY material [30 UT]; PLUMPER [7 h] | 6,500 | project | 07 | 10 | 03 |
| 1020 | INTIAL SAINTARY WORK | 7d | 2014-03-11 | 2014-03-20 | 340 |  | 9d | 0d | SAINTARY material [70 UT]; PLUMPER [3 h]; PLUMPER [14 h]; LABOUR [7 h] | 13,000 | project | 07 | 10 | 04 |
| 1130 | 1ST ELECTRICAL FIX | 10d | 2014-03-16 | 2014-03-30 | 290, 1100 |  | 45d | 4d | ELECTRICAL [50 h]; BOX & PIPE [100 UT]; ELECTRCIAN [20 h]; LABOUR [10 h] | 5,500 | project | 08 | 11 | 03 |
| 350 | WINDOWS&DOORS | 14d | 2014-03-16 | 2014-04-05 | 290, 340 |  | 33d | 0d | WOODEN FRAME [14 UT] | 2,800 | project | 05 | 09 | 04 |
| 190 | 3RD FLOOR COLUMN | 7d | 2014-03-19 | 2014-03-30 | 180, 1540 |  | 27d | 0d | STEEL [2.5 tons]; CARPENTER [20 h]; STELL FIXER [20 h]; CONCRETE [20 m3]; CARPENTER [10 h]; LABOUR [3 h]; STEEL FIXER [7 h]; LABOUR [2 h] | 21,750 | project | 04 | 07 | 06 |
| 400 | 2ND FLOOR MASONARY WORK | 10d | 2014-03-19 | 2014-04-03 | 1910, 1930, 180 |  | 18d | 0d | BRICK [58 TH]; MAISON [1040 h]; SAND [42 m3]; CEMENT [13.5 tons]; WATER [42 m3]; MASION [104 h]; LABOUR [70 h] | 30,158 | project | 05 | 08 | 05 |
| 380 | CERMIC | 10d | 2014-03-22 | 2014-04-05 | 1020, 320 |  | 194d | 0d | CEMENT [3 tons]; SAND [9 m3]; WHITE CEMENT [0.3 tons]; CERMIC [290 m2]; CERMIC MAISON [290 h]; WATER [12 m3]; TILE MASION [32 h]; LABOUR [16 h] | 29,987 | project | 05 | 09 | 04 |
| 200 | 3RD FLOOR SLAB | 10d | 2014-03-30 | 2014-04-13 | 190, 1830 |  | 27d | 0d | STEEL [13 tons]; CONCRETE [40 m3]; CARPENTER [90 h]; STELL FIXER [130 h]; CARPENTER [40 h]; CARPENTER [16 h]; LABOUR [5 h]; CARPENTER [8 h]; LABOUR [3 h]; STEEL FIXER [26 h]; LABOUR [9 h] | 130,000 | project | 04 | 07 | 06 |
| 1040 | INTIAL SAINTARY WORK | 7d | 2014-04-03 | 2014-04-13 | 1020, 400 |  | 18d | 0d | SAINTARY material [70 UT]; PLUMPER [3 h]; PLUMPER [14 h]; LABOUR [7 h] | 13,000 | project | 07 | 10 | 05 |
| 1140 | 2ND ELECTRICAL FIX | 5d | 2014-04-03 | 2014-04-10 | 300, 1110 |  | 45d | 0d | ELEC WIRE [1]; ELECTRICAL [50 h]; ELECTRCIAN [10 h]; LABOUR [5 h] | 6,000 | project | 08 | 11 | 03 |
| 360 | PLASTER | 25d | 2014-04-03 | 2014-05-10 | 1020, 300 |  | 0d |  | PLASTER [2664 h]; SAND [27 m3]; CEMENT [8 tons]; WATER [55 m3]; PLASTER [222 h]; LABOUR [74 h] | 28,842 | project | 05 | 09 | 04 |
| 1030 | FINAL SAINTARY WORK | 3d | 2014-04-05 | 2014-04-09 | 380, 1010 |  | 209d | 13d | PLUMPER [3 h]; SAINTARY material [30 UT]; PLUMPER [7 h] | 6,500 | project | 07 | 10 | 04 |
| 1170 | 1ST ELECTRICAL FIX | 10d | 2014-04-05 | 2014-04-19 | 350, 1130 |  | 41d | 4d | BOX & PIPE [1 UT]; ELECTRICAL [55 h]; ELECTRCIAN [20 h]; LABOUR [10 h] | 5,500 | project | 08 | 11 | 04 |
| 410 | WINDOWS&DOORS | 14d | 2014-04-05 | 2014-04-24 | 350, 400 |  | 33d | 0d | WOODEN FRAME [14 UT] | 2,800 | project | 05 | 09 | 05 |
| 310 | MATEL LATH | 4d | 2014-04-10 | 2014-04-16 | 1140 |  | 45d | 0d | FALSE CELLING [34 h] | 4,080 | project | 05 | 09 | 03 |
| 210 | ROOF FLOOR COLUMN | 5d | 2014-04-14 | 2014-04-21 | 200, 1560 |  | 46d | 0d | STELL FIXER [15 h]; CARPENTER [10 h]; STEEL [2 tons]; CONCRETE [15 m3]; CARPENTER [5 h]; CARPENTER [2 h]; LABOUR [1 h]; CARPENTER [1 h]; STEEL FIXER [3 h] | 16,750 | project | 04 | 07 | 07 |
| 440 | CERMIC | 10d | 2014-04-14 | 2014-04-28 | 1040, 380 |  | 188d | 0d | CERMIC [395 m2]; WHITE CEMENT [0.1 tons]; CEMENT [4 tons]; WATER [16 m3]; SAND [12 m3]; CERMIC MAISON [395 h]; TILE MASION [50 h]; LABOUR [25 h] | 40,961 | project | 05 | 09 | 05 |
| 460 | 3RD FLOOR MASONARY WORK | 10d | 2014-04-14 | 2014-04-28 | 400, 1950, 200 |  | 27d | 0d | BRICK [65 TH]; WATER [48 m3]; SAND [48 m3]; CEMENT [15.5 tons]; MAISON [1180 h]; MASION [118 h]; LABOUR [79 h] | 34,612 | project | 05 | 08 | 06 |
| 270 | INTIAL PAINTING | 12d | 2014-04-16 | 2014-05-04 | 310 |  | 45d | 0d | PAINT PACKAGE [120 UT]; PAINTER [600 h]; PAINTER [60 h]; LABOUR [15 h] | 13,200 | project | 05 | 09 | 02 |
| 220 | ROOF FLOOR SLAB | 5d | 2014-04-21 | 2014-04-28 | 210, 1850 |  | 46d | 0d | STELL FIXER [15 h]; CARPENTER [10 h]; STEEL [2 tons]; CONCRETE [15 m3]; CARPENTER [5 h]; CARPENTER [2 h]; LABOUR [1 h]; CARPENTER [1 h]; STEEL FIXER [3 h] | 16,750 | project | 04 | 07 | 07 |
| 1200 | 1ST ELECTRICAL FIX | 10d | 2014-04-26 | 2014-05-10 | 410, 1170 |  | 37d | 6d | ELECTRICAL [60 h]; BOX & PIPE [1 UT]; ELECTRCIAN [20 h]; LABOUR [10 h] | 5,500 | project | 08 | 11 | 05 |
| 1050 | FINAL SAINTARY WORK | 3d | 2014-04-28 | 2014-05-03 | 440, 1030 |  | 196d | 15d | PLUMPER [3 h]; SAINTARY material [30 UT]; PLUMPER [7 h] | 6,500 | project | 07 | 10 | 05 |
| 1060 | INTIAL SAINTARY WORK | 7d | 2014-04-28 | 2014-05-08 | 1040, 460 |  | 27d | 0d | SAINTARY material [70 UT]; PLUMPER [3 h]; PLUMPER [14 h]; LABOUR [7 h] | 13,000 | project | 07 | 10 | 06 |
| 470 | WINDOWS&DOORS | 14d | 2014-04-28 | 2014-05-18 | 410, 460 |  | 31d | 0d | WOODEN FRAME [166 UT] | 33,200 | project | 05 | 09 | 06 |
| 520 | ROOF FLOOR MASONARY WORK | 2d | 2014-04-28 | 2014-04-30 | 460, 1970, 220 |  | 46d | 5d | MAISON [160 h]; WATER [7 m3]; BRICK [8.8 TH]; CEMENT [2.08 tons]; SAND [7 m3]; MASION [16 h]; LABOUR [11 h] | 4,618 | project | 05 | 08 | 07 |
| 630 | WINDOWS&DOORS | 14d | 2014-05-04 | 2014-05-24 | 270 |  | 100d | 0d | WINDOWS&DOORS [26 UT] | 3,900 | project | 06 | 09 | 02 |
| 680 | ALUMINUM | 21d | 2014-05-04 | 2014-06-03 | 270 |  | 45d | 0d | ALMNIUM [74 m2] | 11,100 | project | 06 | 09 | 03 |
| 1080 | INTIAL SAINTARY WORK | 3d | 2014-05-08 | 2014-05-12 | 1060, 520 |  | 47d |  | SAINTARY material [30 UT]; PLUMPER [3 h]; LABOUR [1 h] | 5,500 | project | 07 | 10 | 07 |
| 500 | CERMIC | 11d | 2014-05-08 | 2014-05-24 | 1060, 440 |  | 181d | 0d | CERMIC MAISON [360 h]; WATER [15 m3]; CEMENT [3.6 tons]; SAND [11 m3]; WHITE CEMENT [0.36 tons]; TILE MASION [45 h]; LABOUR [23 h] | 31,032 | project | 05 | 09 | 06 |
| 1180 | 2ND ELECTRICAL FIX | 5d | 2014-05-10 | 2014-05-17 | 360, 1140 |  | 33d | 0d | ELECTRICAL [55 h]; ELEC WIRE [1]; ELECTRCIAN [10 h]; LABOUR [5 h] | 8,000 | project | 08 | 11 | 04 |
| 420 | PLASTER | 26d | 2014-05-10 | 2014-06-16 | 1040, 360 |  | 0d |  | PLASTER [2768 h]; SAND [28 m3]; WATER [56 m3]; CEMENT [8.5 tons]; PLASTER [231 h]; LABOUR [77 h] | 35,743 | project | 05 | 09 | 05 |
| 370 | MATEL LATH | 4d | 2014-05-17 | 2014-05-22 | 1180, 310 |  | 33d | 0d | FALSE CELLING [34 h]; FALSE CEILLING [6 h]; LABOUR [2 h] | 4,080 | project | 05 | 09 | 04 |
| 1230 | 1ST ELECTRICAL FIX | 10d | 2014-05-19 | 2014-06-02 | 470, 1200 |  | 31d | 0d | BOX & PIPE [1 UT]; ELECTRICAL [60 h]; ELECTRCIAN [20 h]; LABOUR [10 h] | 6,500 | project | 08 | 11 | 06 |
| 530 | WINDOWS&DOORS | 7d | 2014-05-19 | 2014-05-28 | 470, 520 |  | 34d | 3d | WOODEN FRAME [4 UT] | 800 | project | 05 | 09 | 07 |
| 330 | INTIAL PAINTING | 20d | 2014-05-22 | 2014-06-21 | 370, 270 |  | 33d | 0d | PAINT PACKAGE [199 UT]; PAINTER [994 h]; PAINTER [100 h]; LABOUR [25 h] | 21,878 | project | 05 | 09 | 03 |
| 1070 | FINAL SAINTARY WORK | 3d | 2014-05-25 | 2014-05-28 | 500, 1050 |  | 181d | 0d | PLUMPER [3 h]; SAINTARY material [30 UT]; PLUMPER [7 h] | 6,500 | project | 07 | 10 | 06 |
| 640 | PAINTING | 10d | 2014-05-25 | 2014-06-08 | 630 |  | 100d | 0d | PAINT PACKAGE [60 UT]; PAINTER [600 h]; PLASTER [60 h]; LABOUR [15 h] | 10,200 | project | 06 | 09 | 02 |
| 1090 | FINAL SAINTARY WORK | 2d | 2014-05-28 | 2014-06-01 | 1070 |  | 181d | 0d | PLUMPER [3 h]; SAINTARY material [20 UT]; PLUMPER [2 h] | 3,750 | project | 07 | 10 | 07 |
| 1370 | mechincal closeout | 0d | 2014-06-01 | 2014-06-01 | 1090, 990, 1010, 1030, 1050, 1070 |  | 181d |  |  |  | project | 07 | 10 | 10 |
| 1260 | 1ST ELECTRICAL FIX | 10d | 2014-06-02 | 2014-06-16 | 530, 1230 |  | 31d | 0d | ELECTRICAL [20 h]; BOX & PIPE [1 UT]; ELECTRCIAN [20 h]; LABOUR [10 h] | 2,250 | project | 08 | 11 | 07 |
| 650 | WOODEN FLOORS | 7d | 2014-06-03 | 2014-06-14 | 680 |  | 45d | 0d | WOODEN FLOOR [68 m2] | 1,020 | project | 06 | 09 | 03 |
| 660 | MARBLE FLOORS | 10d | 2014-06-03 | 2014-06-18 | 650 SS |  | 45d | 0d | MARBLE [256 m2]; SAND [26 m3]; CEMENT [2 tons]; WATER [13 m3]; TILE MAISON [256 h]; MARBLE MAISON [32 h]; LABOUR [16 h] | 30,778 | project | 06 | 09 | 03 |
| 670 | FINISHING FLOORS | 7d | 2014-06-03 | 2014-06-14 | 660 SS |  | 45d | 0d | FINISHING LABOUR [324 h]; LABOUR [14 h] | 972 | project | 06 | 09 | 03 |
| 1120 | FINAL ELECTRICAL FIX | 7d | 2014-06-08 | 2014-06-18 | 640 |  | 105d | 29d | FINISHING ELEC [70]; ELECTRICAL [7 h]; PLUMPER [14 h]; LABOUR [3.5 h] | 1,500 | project | 08 | 11 | 02 |
| 690 | DOOR | 21d | 2014-06-14 | 2014-07-14 | 670 |  | 45d | 0d | WINDOWS&DOORS [21 UT] | 3,150 | project | 06 | 09 | 03 |
| 1210 | 2ND ELECTRICAL FIX | 5d | 2014-06-17 | 2014-06-24 | 420, 1180 |  | 29d | 0d | ELEC WIRE [1]; ELECTRICAL [60 h]; ELECTRCIAN [10 h]; LABOUR [5 h] | 8,500 | project | 08 | 11 | 05 |
| 1290 | 1ST ELECTRICAL FIX | 10d | 2014-06-17 | 2014-07-01 | 1260 |  | 31d | 0d | ELECTRICAL [1 h]; BOX & PIPE [1 UT]; ELECTRCIAN [20 h]; LABOUR [10 h] | 5,500 | project | 08 | 11 | 08 |
| 480 | PLASTER | 23d | 2014-06-17 | 2014-07-20 | 1060, 420 |  | 0d |  | PLASTER [2380 h]; SAND [24 m3]; CEMENT [7.5 tons]; WATER [48 m3]; MASION [199 h]; LABOUR [67 h] | 37,454 | project | 05 | 09 | 06 |
| 740 | ALUMINUM | 21d | 2014-06-21 | 2014-07-21 | 330, 680 |  | 33d | 0d | ALMNIUM [130 m2] | 19,500 | project | 06 | 09 | 04 |
| 430 | MATEL LATH | 4d | 2014-06-24 | 2014-06-30 | 1210, 370 |  | 29d | 0d | FALSE CELLING [36 h]; FALSE CEILLING [7 h]; LABOUR [3 h] | 4,320 | project | 05 | 09 | 05 |
| 390 | INTIAL PAINTING | 15d | 2014-06-30 | 2014-07-21 | 430, 330 |  | 29d | 0d | PAINT PACKAGE [288 UT]; PAINTER [1440 h]; PAINTER [144 h]; LABOUR [36 h] | 31,680 | project | 05 | 09 | 04 |
| 1320 | 1ST ELECTRICAL FIX | 7d | 2014-07-01 | 2014-07-12 | 1290 |  | 31d |  | ELECTRICAL [4 h]; BOX & PIPE [1 UT]; ELECTRCIAN [14 h]; LABOUR [7 h] | 3,500 | project | 08 | 11 | 09 |

Notes:
- 150: Expenses: steel tie 500; lunch 150
- 160: Steps: capenter work; steel fixer; concrete / Expenses: steel ties 750; lunch 150
- 170: Expenses: steel ties 500; lunch 150
- 190: Expenses: steel tirs 500; lunch 150

| ID | Activity | Duration | Start | Finish | Predecessors | Total float | Free float | Resources | Cost | 01 project | 02 type of work | 03 div of work | 04 floor |
| --- | --- | --- | --- | --- | --- | --- | --- | --- | --- | --- | --- | --- | --- |
| 700 | PAINTING | 11d | 2014-07-14 | 2014-07-30 | 690, 640 | 75d | 0d | PAINT PACKAGE [100 UT]; PAINTER [992 h]; PAINTER [100 h]; LABOUR [25 h] | 16,904 | project | 06 | 09 | 03 |
| 1240 | 2ND ELECTRICAL FIX | 5d | 2014-07-20 | 2014-07-27 | 480, 1210 | 21d | 0d | ELECTRICAL [60 h]; ELEC WIRE [1]; ELECTRCIAN [10 h]; LABOUR [5 h] | 9,000 | project | 08 | 11 | 06 |
| 540 | PLASTER | 8d | 2014-07-20 | 2014-07-31 | 1080, 480 | 0d |  | PLASTER [720 h]; SAND [10 m3]; WATER [20 m3]; CEMENT [2.2 tons]; PLASTER [80 h]; LABOUR [80 h] | 11,360 | project | 05 | 09 | 07 |
| 710 | WOODEN FLOORS | 14d | 2014-07-22 | 2014-08-11 | 740, 650 | 33d | 0d | WOODEN FLOOR [216 m2] | 3,240 | project | 06 | 09 | 04 |
| 720 | MARBLE FLOORS | 7d | 2014-07-22 | 2014-07-31 | 710 SS, 660 | 33d | 0d | MARBLE [214 m2]; SAND [22 m3]; CEMENT [2.5 tons]; WATER [11 m3]; TILE MAISON [214 h]; MARBLE MAISON [27 h]; LABOUR [13 h] | 26,146 | project | 06 | 09 | 04 |
| 730 | FINISHING FLOORS | 7d | 2014-07-22 | 2014-07-31 | 720 SS, 670 | 33d | 0d | FINISHING LABOUR [430 h]; LABOUR [14 h] | 1,290 | project | 06 | 09 | 04 |
| 800 | ALUMINUM | 21d | 2014-07-22 | 2014-08-21 | 390, 740 | 33d | 0d | ALMNIUM [150 m2] | 22,500 | project | 06 | 09 | 05 |
| 920 | CERETAL WORK | 21d | 2014-07-26 | 2014-08-25 | 590 FF | 0d |  | STEEL MAKER [1400 kg] | 16,800 | project | 06 | 09 | 08 |
| 490 | MATEL LATH | 4d | 2014-07-28 | 2014-08-02 | 1240, 430 | 21d | 0d | FALSE CELLING [30 h]; FALSE CEILLING [6 h]; LABOUR [3 h] | 3,600 | project | 05 | 09 | 06 |
| 1160 | FINAL ELECTRICAL FIX | 10d | 2014-07-30 | 2014-08-13 | 700, 1120 | 76d | 22d | ELECTRICAL [50 h]; FINISHING ELEC [1]; ELECTRCIAN [100 h]; LABOUR [10 h] | 2,500 | project | 08 | 11 | 03 |
| 1270 | 2ND ELECTRICAL FIX | 5d | 2014-07-31 | 2014-08-07 | 540, 1240 | 29d | 0d | ELECTRICAL [20 h]; ELEC WIRE [1]; ELECTRCIAN [10 h]; LABOUR [5 h] | 3,750 | project | 08 | 11 | 07 |
| 560 | PROOFING | 4d | 2014-07-31 | 2014-08-06 | 540 | 105d | 0d | INSOMAT [552 m2]; ISOLATION LABOUR [552 h]; ISOLATION [11 h]; LABOUR [4 h] | 19,320 | project | 05 | 12 | 07 |
| 590 | PLASTER | 17d | 2014-07-31 | 2014-08-25 | 540 | 0d |  | PLASTER [1280 h]; SAND [15 m3]; CEMENT [3.85 tons]; WATER [30 m3]; PLASTER [142 h]; LABOUR [94 h] | 27,765 | project | 05 | 09 | 08 |
| 750 | DOOR | 21d | 2014-07-31 | 2014-08-31 | 730, 690 | 33d | 0d | WINDOWS&DOORS [29 UT] | 4,350 | project | 06 | 09 | 04 |
| 450 | INTIAL PAINTING | 16d | 2014-08-03 | 2014-08-25 | 490, 390 | 21d | 0d | PAINTER [18408 h]; PAINT PACKAGE [307 UT]; PAINTER [154 h]; LABOUR [39 h] | 236,246 | project | 05 | 09 | 05 |
| 570 | THERMAL INSULATION | 4d | 2014-08-06 | 2014-08-12 | 560 | 105d | 0d | THERMAL ISOLATION [552 m2]; ISOLATION [11 h]; LABOUR [4 h] | 27,600 | project | 05 | 12 | 07 |
| 550 | MATEL LATH | 4d | 2014-08-09 | 2014-08-13 | 1270, 490 | 29d | 8d | FALSE CELLING [20 h]; FALSE CEILLING [4 h]; LABOUR [1 h] | 2,400 | project | 05 | 09 | 07 |
| 580 | P. C. SCREED | 1d | 2014-08-12 | 2014-08-13 | 570 | 105d | 0d | CONCRETE [50 m3]; LABOUR [2 h] | 11,000 | project | 05 | 07 | 07 |
| 890 | CEMENT TILES | 9d | 2014-08-14 | 2014-08-27 | 580 | 105d | 0d | CEMENT TILE [680 m2]; SAND [75 m3]; CEMENT [7 tons]; WATER [30 m3]; TILE MAISON [680 h]; TILE MASION [57 h]; LABOUR [29 h] | 36,420 | project | 06 | 09 | 07 |
| 770 | WOODEN FLOORS | 14d | 2014-08-21 | 2014-09-10 | 800, 710 | 33d | 0d | WOODEN FLOOR [216 m2] | 3,240 | project | 06 | 09 | 05 |
| 780 | MARBLE FLOORS | 5d | 2014-08-21 | 2014-08-28 | 770 SS, 720 | 33d | 0d | MARBLE [200 m2]; SAND [40 m3]; CEMENT [2 tons]; TILE MAISON [200 h]; WATER [10 m3]; MARBLE MAISON [50 h]; LABOUR [13 h] | 24,500 | project | 06 | 09 | 05 |
| 790 | FINISHING FLOORS | 7d | 2014-08-21 | 2014-08-31 | 780 SS, 730 | 33d | 0d | FINISHING LABOUR [416 h]; LABOUR [14 h] | 1,248 | project | 06 | 09 | 05 |
| 1300 | 2ND ELECTRICAL FIX | 5d | 2014-08-26 | 2014-09-02 | 590, 1270 | 50d | 0d | ELECTRICAL [1 h]; ELEC WIRE [1]; ELECTRCIAN [10 h]; LABOUR [5 h] | 2,200 | project | 08 | 11 | 08 |
| 510 | INTIAL PAINTING | 9d | 2014-08-26 | 2014-09-08 | 550, 450 | 21d | 0d | PAINT PACKAGE [262 UT]; PAINTER [90 h]; PAINTER [131 h]; LABOUR [33 h] | 14,180 | project | 05 | 09 | 06 |
| 600 | CERETAL WORK | 14d | 2014-08-26 | 2014-09-15 | 610 SS | 103d | 41d | STEEL MAKER [1000 kg] | 12,000 | project | 05 | 09 | 09 |
| 610 | PLASTER | 55d | 2014-08-26 | 2014-11-13 | 590, 1320, 920 | 0d |  | PLASTER [4000 h]; WATER [80 m3]; SAND [40 m3]; CEMENT [12 tons]; PLASTER [1000 h]; LABOUR [667 h] | 86,640 | project | 05 | 09 | 09 |
| 900 | FACADES PLASTER | 9d | 2014-08-27 | 2014-09-09 | 890 | 105d | 48d | PLASTER [360 h]; WATER [40 m3]; GRAVITO [4 tons]; PLASTER [90 h]; LABOUR [23 h] | 8,400 | project | 06 | 09 | 07 |
| 760 | PAINTING | 10d | 2014-09-01 | 2014-09-15 | 750, 700 | 53d | 0d | PAINT PACKAGE [145 UT]; PAINTER [1440 h]; PAINTER [144 h]; LABOUR [29 h] | 24,530 | project | 06 | 09 | 04 |
| 810 | DOOR | 21d | 2014-09-01 | 2014-10-01 | 790, 750 | 33d | 0d | WOODEN FLOOR [33 m2] | 495 | project | 06 | 09 | 05 |
| 930 | PLASTER COLORD | 13d | 2014-09-02 | 2014-09-21 | 1300 | 71d | 0d | PLASTER [640 h]; WATER [50 m3]; GRAVITO [6.5 tons]; PLASTER [80 h]; LABOUR [40 h] | 6,600 | project | 06 | 09 | 08 |
| 860 | ALUMINUM | 21d | 2014-09-08 | 2014-10-08 | 800, 510 | 21d | 0d | ALMNIUM [144 m2] | 21,600 | project | 06 | 09 | 06 |
| 1190 | FINAL ELECTRICAL FIX | 10d | 2014-09-15 | 2014-09-29 | 760, 1160 | 54d | 12d | FINISHING ELEC [1]; ELECTRICAL [55 h]; ELECTRCIAN [10 h]; LABOUR [10 h] | 2,000 | project | 08 | 11 | 04 |
| 940 | MARBLE FLOORS | 8d | 2014-09-21 | 2014-10-02 | 930 | 71d | 0d | WATER [20 m3]; CEMENT [1.5 tons]; SAND [15 m3]; TILE MAISON [150 h]; MARBLE [150 m2]; MARBLE MAISON [30 h]; LABOUR [15 h] | 18,220 | project | 06 | 09 | 08 |
| 950 | MARBLE STAIRS | 9d | 2014-09-21 | 2014-10-04 | 940 SS | 71d | 50d | STAIRS [170 UT]; MARBLE MAISON [17 h]; LABOUR [8 h] | 8,500 | project | 06 | 09 | 08 |
| 1690 | RED TILES MATERIAL SUBMITAL | 5d | 2014-10-01 | 2014-10-08 | 1700 SF, 1650 | 92d |  |  |  | project | 02 | 05 | 10 |
| 820 | PAINTING | 11d | 2014-10-01 | 2014-10-16 | 810, 760 | 42d | 0d | PAINT PACKAGE [110 UT]; PAINTER [110 h]; LABOUR [28 h] | 6,820 | project | 06 | 09 | 05 |
| 1700 | RED TILES MATERIAL APPROVAL | 5d | 2014-10-08 | 2014-10-15 | 1710 SF | 87d | 0d |  |  | project | 02 | 05 | 10 |
| 830 | WOODEN FLOORS | 14d | 2014-10-08 | 2014-10-28 | 860, 770 | 21d | 0d | WOODEN FLOOR [160 m2] | 2,400 | project | 06 | 09 | 06 |
| 840 | MARBLE FLOORS | 5d | 2014-10-08 | 2014-10-15 | 830 SS, 780 | 21d | 0d | MARBLE [230 m2]; SAND [46 m3]; CEMENT [2.5 tons]; WATER [23 m3]; TILE MAISON [230 h]; MARBLE MAISON [29 h]; LABOUR [8 h] | 28,298 | project | 06 | 09 | 06 |
| 850 | FINISHING FLOORS | 7d | 2014-10-08 | 2014-10-19 | 840 SS, 790 | 21d | 0d | FINISHING LABOUR [380 h]; LABOUR [14 h] | 1,140 | project | 06 | 09 | 06 |
| 1710 | RED TILES MATERIAL PROCURMENT | 5d | 2014-10-15 | 2014-10-23 | 1720 SF | 82d | 0d |  |  | project | 02 | 05 | 10 |
| 1220 | FINAL ELECTRICAL FIX | 10d | 2014-10-18 | 2014-11-01 | 820, 1190 | 42d | 21d | ELECTRICAL [60 h]; FINISHING ELEC [1]; ELECTRCIAN [10 h]; LABOUR [10 h] | 2,500 | project | 08 | 11 | 05 |
| 870 | DOOR | 21d | 2014-10-19 | 2014-11-18 | 850, 810 | 21d | 0d | WINDOWS&DOORS [23 UT] | 3,450 | project | 06 | 09 | 06 |
| 1720 | RED TILES MATERIAL DELIEVERY | 15d | 2014-10-23 | 2014-11-13 | 620 SF | 67d | 0d |  |  | project | 02 | 05 | 10 |
| 1330 | 2ND ELECTRICAL FIX | 5d | 2014-11-13 | 2014-11-20 | 610, 1300 | 0d |  | ELECTRICAL [4 h]; ELEC WIRE [1]; ELECTRCIAN [10 h]; LABOUR [5 h] | 7,000 | project | 08 | 11 | 09 |
| 620 | RED TILES | 5d | 2014-11-13 | 2014-11-20 | 610, 600 | 62d | 0d | TILE MAISON [60 h]; CEMENT [0.6 tons]; SAND [0.5 m3]; WATER [2 m3]; RED TILE [60 m2]; TILE MASION [12 h]; LABOUR [6 h] | 7,810 | project | 05 | 09 | 09 |
| 880 | PAINTING | 9d | 2014-11-18 | 2014-12-01 | 870, 820 | 21d | 0d | PAINT PACKAGE [132 UT]; PAINTER [1310 h]; PAINTER [131 h]; LABOUR [33 h] | 22,320 | project | 06 | 09 | 06 |
| 910 | DOOR | 7d | 2014-11-18 | 2014-11-29 | 870, 900 | 57d | 40d | WINDOWS&DOORS [4 UT] | 600 | project | 06 | 09 | 07 |
| 1340 | FINAL ELECTRICAL FIX | 4d | 2014-11-22 | 2014-11-26 | 1330 | 51d |  | ELECTRICAL [4 h]; FINISHING ELEC [1]; ELECTRCIAN [4 h]; LABOUR [4 h] | 1,500 | project | 08 | 11 | 09 |
| 960 | FACADES PLASTER DAHARA | 40d | 2014-11-22 | 2015-01-18 | 1330 | 0d |  | PLASTER [2000 h]; WATER [100 m3]; GRAVITO [20 tons]; PLASTER [200 h]; LABOUR [100 h] | 40,200 | project | 06 | 09 | 09 |
| 1250 | FINAL ELECTRICAL FIX | 10d | 2014-12-01 | 2014-12-16 | 880, 1220 | 21d | 0d | ELECTRICAL [60 h]; FINISHING ELEC [1]; ELECTRCIAN [10 h]; LABOUR [10 h] | 2,000 | project | 08 | 11 | 06 |
| 1280 | FINAL ELECTRICAL FIX | 7d | 2014-12-16 | 2014-12-25 | 1250, 950 | 21d |  | ELECTRICAL [20 h]; FINISHING ELEC [1]; ELECTRCIAN [7 h]; LABOUR [7 h] | 1,500 | project | 08 | 11 | 07 |
| 970 | BARGOLAS | 5d | 2015-01-19 | 2015-01-26 | 960 | 0d |  | FURNTURE [1 h] | 5,000 | project | 06 | 09 | 09 |
| 1310 | FINAL ELECTRICAL FIX | 10d | 2015-01-26 | 2015-02-09 | 1280, 970 | 0d |  | ELECTRICAL [1 h]; FINISHING ELEC [1]; LABOUR [10 h]; ELECTRCIAN [10 h] | 2,000 | project | 08 | 11 | 08 |
| 1360 | final fisihes closeout | 0d | 2015-01-26 | 2015-01-26 | 970, 910 | 17d |  |  |  | project | 06 | 09 | 10 |
| 1350 | ELEVATOR | 7d | 2015-02-09 | 2015-02-19 | 1380 | 0d |  |  |  | project | 09 | 13 | 10 |
| 1380 | electrical closeout | 0d | 2015-02-09 | 2015-02-09 | 1340, 1310 | 0d |  |  |  | project | 08 | 11 | 10 |
| 1390 | confeying closeout | 0d | 2015-02-19 | 2015-02-19 | 1350 | 0d |  |  |  | project | 09 | 13 | 10 |

## Activity codes

| Code | Value | Meaning |
| --- | --- | --- |
| 01 project | project | test project |
| 02 type of work | 01 | general milestone |
| 02 type of work | 02 | engineering work |
| 02 type of work | 03 | substructure |
| 02 type of work | 04 | supersturcture |
| 02 type of work | 05 | rough finishes |
| 02 type of work | 06 | final finishes |
| 02 type of work | 07 | mechincal works |
| 02 type of work | 08 | electrical work |
| 02 type of work | 09 | confeying system |
| 03 div of work | 01 | general |
| 03 div of work | 02 | civil shopdrawing |
| 03 div of work | 03 | arch shopdrwaing |
| 03 div of work | 04 | civil material |
| 03 div of work | 05 | finishing material |
| 03 div of work | 06 | earthwork |
| 03 div of work | 07 | concrete work |
| 03 div of work | 08 | masonary |
| 03 div of work | 09 | finshes |
| 03 div of work | 10 | mechincal |
| 03 div of work | 11 | electrical |
| 03 div of work | 12 | thermal |
| 03 div of work | 13 | elevator |
| 04 floor | 01 | underground |
| 04 floor | 02 | basement floor |
| 04 floor | 03 | ground floor |
| 04 floor | 04 | 1st floor |
| 04 floor | 05 | 2nd floor |
| 04 floor | 06 | 3rd floor |
| 04 floor | 07 | roof floor |
| 04 floor | 08 | enterance & staircase |
| 04 floor | 09 | facades |
| 04 floor | 10 | all floor |
